Schedule from MS Project, 2016-05-05 to 2016-09-29.

## Calendars

- 标准: Mon-Fri 08:00-12:00, 13:00-17:00; Sat-Sun off. Exceptions (off unless hours are given): 2016-06-09 to 2016-06-10, 2016-06-12 08:00-12:00, 13:00-17:00, 2016-09-15 to 2016-09-16, 2016-09-18 08:00-12:00, 13:00-17:00.

## Resources

| Resource |
| --- |
| 刘溪滨 |
| 需求分析师 |
| 架构师 |
| 高级工程师 |
| 测试工程师 |
| "刘溪滨 |
| 需求分析师" |
| 配置工程师 |

## Schedule

| ID | WBS | Task | Duration | Start | Finish | Predecessors | Baseline start | Baseline finish | Baseline duration | Total slack | Free slack | Constraint | Resources | Work |
| --- | --- | --- | --- | --- | --- | --- | --- | --- | --- | --- | --- | --- | --- | --- |
| 1 | 1 | **规则设计图形化产品V1.0** | 104d | 2016-05-05 | 2016-09-29 |  | 2013-03-27 | 2013-05-16 | 36.5d | 0d |  |  |  | 3120h |
| 2 | 1.1 | **软件需求分析** | 7d | 2016-05-05 | 2016-05-13 |  |  |  |  | 97d |  |  |  | 56h |
| 3 | 1.1.1 | 编写软件需求规格说明书 | 5d | 2016-05-05 | 2016-05-11 |  |  |  |  | 97d | 0d | start no earlier than 2016-05-05 | 刘溪滨 | 40h |
| 4 | 1.1.2 | 评审软件需求规格说明书 | 1d | 2016-05-12 | 2016-05-12 | 3 |  |  |  | 97d | 0d | finish no earlier than 2015-12-18 | 刘溪滨 | 8h |
| 5 | 1.1.3 | 修改、确认软件需求规格说明书 | 1d | 2016-05-13 | 2016-05-13 | 4 |  |  |  | 97d |  |  | 刘溪滨 | 8h |
| 6 | 1.2 | **软件设计** | 83d | 2016-05-16 | 2016-09-08 |  |  |  |  | 14d |  |  |  | 2264h |
| 7 | 1.2.1 | **概要设计** | 37d | 2016-05-16 | 2016-07-06 |  |  |  |  | 60d |  |  |  | 512h |
| 8 | 1.2.1.1 | 系统架构设计 | 10d | 2016-05-16 | 2016-05-27 |  |  |  |  | 68d | 0d | start no earlier than 2016-05-16 | 刘溪滨 | 80h |
| 9 | 1.2.1.2 | **系统接口设计** | 15d | 2016-05-30 | 2016-06-20 | 8 |  |  |  | 68d |  |  | 刘溪滨; 架构师 | 240h |
| 10 | 1.2.1.2.1 | 通讯协议设计 | 3d | 2016-05-30 | 2016-06-01 |  |  |  |  | 84d |  |  |  |  |
| 11 | 1.2.1.2.2 | 报文服务设计 | 3d | 2016-06-12 | 2016-06-14 |  |  |  |  | 60d | 0d | start no earlier than 2016-06-12 |  |  |
| 12 | 1.2.1.2.3 | 通讯服务调试 | 4d | 2016-06-15 | 2016-06-20 | 11 |  |  |  | 60d | 0d |  |  |  |
| 13 | 1.2.1.3 | 系统模型设计 | 10d | 2016-06-21 | 2016-07-04 | 12 |  |  |  | 60d | 0d | start no earlier than 2016-06-21 | 刘溪滨; 架构师 | 160h |
| 14 | 1.2.1.4 | 非功能性需求设计 | 0.5d | 2016-07-05 | 2016-07-05 | 13 |  |  |  | 60d | 0d |  | 刘溪滨; 架构师 | 8h |
| 15 | 1.2.1.5 | 错误处理设计 | 0.5d | 2016-07-05 | 2016-07-05 | 14 |  |  |  | 60d | 0d |  | 刘溪滨; 架构师 | 8h |
| 16 | 1.2.1.6 | 评审设计说明书 | 0.5d | 2016-07-06 | 2016-07-06 | 15 |  |  |  | 60d | 0d |  | 刘溪滨; 架构师 | 8h |
| 17 | 1.2.1.7 | 修改、确定设计说明书 | 0.5d | 2016-07-06 | 2016-07-06 | 16 |  |  |  | 60d |  |  | 刘溪滨; 架构师 | 8h |
| 18 | 1.2.2 | **详细设计及编码实现** | 66d | 2016-05-30 | 2016-08-30 |  |  |  |  | 14d |  |  |  | 1584h |
| 19 | 1.2.2.1 | 详细设计及编码实现 | 66d | 2016-05-30 | 2016-08-30 |  |  |  |  | 14d | 0d | start no earlier than 2016-05-30 | 刘溪滨; 架构师; 高级工程师 | 1584h |
| 20 | 1.2.3 | 集成测试 | 3d | 2016-08-31 | 2016-09-02 | 19 |  |  |  | 14d | 0d | start no earlier than 2016-08-23 | 刘溪滨; 架构师; 高级工程师 | 72h |
| 21 | 1.2.4 | 系统自测试 | 3d | 2016-09-05 | 2016-09-07 | 20 |  |  |  | 14d | 0d |  | 刘溪滨; 架构师; 高级工程师 | 72h |
| 22 | 1.2.5 | 提交测试版本 | 1d | 2016-09-08 | 2016-09-08 | 21 |  |  |  | 14d |  |  | 刘溪滨; 架构师; 高级工程师 | 24h |
| 23 | 1.3 | **产品测试** | 58d | 2016-07-07 | 2016-09-27 |  |  |  |  | 2d |  |  |  | 752h |
| 24 | 1.3.1 | 测试用例编写 | 46d | 2016-07-07 | 2016-09-08 |  |  |  |  | 2d | 0d | finish no earlier than 2016-09-08 | 测试工程师 | 368h |
| 25 | 1.3.2 | 第一轮测试 | 5d | 2016-09-09 | 2016-09-18 | 24 |  |  |  | 2d | 0d | start no earlier than 2016-09-01 | 刘溪滨; 架构师; 高级工程师; 测试工程师 | 160h |
| 26 | 1.3.3 | bug修改、新测试版发布 | 1d | 2016-09-19 | 2016-09-19 | 25 |  |  |  | 2d | 0d |  | 刘溪滨; 架构师; 高级工程师; 测试工程师 | 32h |
| 27 | 1.3.4 | 第二轮测试 | 5d | 2016-09-20 | 2016-09-26 | 26 |  |  |  | 2d | 0d |  | 刘溪滨; 架构师; 高级工程师; 测试工程师 | 160h |
| 28 | 1.3.5 | bug修改、新测试版发布 | 1d | 2016-09-27 | 2016-09-27 | 27 |  |  |  | 2d |  |  | 刘溪滨; 架构师; 高级工程师; 测试工程师 | 32h |

| ID | WBS | Task | Duration | Start | Finish | Predecessors | Total slack | Constraint | Resources | Work |
| --- | --- | --- | --- | --- | --- | --- | --- | --- | --- | --- |
| 29 | 1.4 | **产品发布** | 2d | 2016-09-28 | 2016-09-29 |  | 0d |  |  | 48h |
| 30 | 1.4.1 | 发布评审会 | 1d | 2016-09-28 | 2016-09-28 |  | 0d | start no earlier than 2016-09-28 | 刘溪滨; 架构师; 测试工程师 | 24h |
| 31 | 1.4.2 | 审核发布包、发布产品 | 1d | 2016-09-29 | 2016-09-29 | 30 | 0d |  | 刘溪滨; 架构师; 测试工程师 | 24h |
